# ProyectoFinal

Schedule from GanttProject, 2017-03-07 to 2017-11-21.
Holidays every year on 01-01, 03-24, 04-02, 05-01, 05-25, 07-09, 12-08, 12-25

## Calendars

- Project calendar: Mon-Fri working; Sat-Sun off.

## Schedule

| ID | WBS | Task | Duration | Start | Finish | Predecessors | Constraint |
| --- | --- | --- | --- | --- | --- | --- | --- |
| 1 | 1 | **Modificación de guias de trabajo y selección de la empresa** | 6d | 2017-03-07 | 2017-03-14 |  |  |
| 2 | 1.1 | **Analisis de la guia de trabajo** | 2d | 2017-03-07 | 2017-03-08 |  |  |
| 3 | 1.1.1 | Crear grupo de whatsapp | 1d | 2017-03-07 | 2017-03-07 |  |  |
| 4 | 1.1.2 | Evaluar distintas alternativas de posibles proyectos | 2d | 2017-03-07 | 2017-03-08 |  |  |
| 5 | 1.1.3 | Revisar guia didactica | 1d | 2017-03-07 | 2017-03-07 |  |  |
| 6 | 1.1.4 | Definir coordinador | 1d | 2017-03-07 | 2017-03-07 |  |  |
| 7 | 1.1.5 | Establecer modulos preliminars del proyecto y herramientas a utilizar | 2d | 2017-03-07 | 2017-03-08 |  |  |
| 8 | 1.2 | **Capacitacion del equipo** | 4d | 2017-03-09 | 2017-03-14 | 2 |  |
| 9 | 1.2.1 | Establecer capacitacion en herramientas para modelado web | 1d | 2017-03-09 | 2017-03-09 | 2 |  |
| 10 | 1.2.2 | Establecer capacitacion en herramienta de gestion de configuracion | 1d | 2017-03-10 | 2017-03-10 | 9 |  |
| 11 | 1.2.3 | Establecer capacitacion en plataforma android | 1d | 2017-03-13 | 2017-03-13 | 10 | start no earlier than 2017-03-13 |
| 12 | 1.2.4 | Establecer capacitacion en persistencia de datos | 1d | 2017-03-14 | 2017-03-14 | 11 |  |
| 13 | 2 | **Definición de requerimientos** | 33d | 2017-03-15 | 2017-05-02 | 1 |  |
| 14 | 2.1 | **Relevamiento general** | 15d | 2017-03-15 | 2017-04-05 | 1 |  |
| 15 | 2.1.1 | Describir inicialmente la organizacion seleccionada y de las organizaciones afines | 3d | 2017-03-15 | 2017-03-17 | 1 |  |
| 16 | 2.1.2 | Determinar la misión y visión de la organización | 1d | 2017-03-15 | 2017-03-15 | 1, 12 |  |
| 17 | 2.1.3 | Identificar sistemas similares y tecnologías utilizadas | 7d | 2017-03-20 | 2017-03-29 | 15, 16 |  |
| 18 | 2.1.4 | Detectar las distintas funciones e intefaces de sistemas existentes | 5d | 2017-03-30 | 2017-04-05 | 17 |  |
| 19 | 2.2 | **Relevamiento detallado** | 18d | 2017-04-06 | 2017-05-02 | 14 |  |
| 20 | 2.2.1 | Evaluar posibles funcionalidades de interes | 3d | 2017-04-06 | 2017-04-10 | 14 |  |
| 21 | 2.2.2 | Realizar modelo lógico | 4d | 2017-04-11 | 2017-04-14 | 20 |  |
| 22 | 2.2.3 | Describir detalladamente funcionalidades seleccionadas | 5d | 2017-04-17 | 2017-04-21 | 21 |  |
| 23 | 2.2.4 | Detallar problemáticas y necesidades detectadas en las funcionalidades descriptas | 3d | 2017-04-24 | 2017-04-26 | 22 |  |
| 24 | 2.2.5 | Definir objetivos y alcances del sistema | 3d | 2017-04-27 | 2017-05-02 | 23 |  |

| ID | WBS | Task | Duration | Start | Finish | Predecessors | Constraint |
| --- | --- | --- | --- | --- | --- | --- | --- |
| 25 | 3 | **Analisis y Diseño** | 29d | 2017-05-03 | 2017-06-13 | 13 |  |
| 26 | 3.1 | **Definir alcances y objetivos del sistema** | 4d | 2017-05-03 | 2017-05-08 | 13 |  |
| 27 | 3.1.1 | Plantear alcances y objetivos | 1d | 2017-05-03 | 2017-05-03 | 13 |  |
| 28 | 3.1.2 | Seleccionar alcances y objetivos | 1d | 2017-05-04 | 2017-05-04 | 27 |  |
| 29 | 3.1.3 | Formalizar alcances y objetivos | 2d | 2017-05-05 | 2017-05-08 | 28 |  |
| 30 | 3.2 | **Definir el modelo funcional del sistema** | 6d | 2017-05-09 | 2017-05-16 | 26 |  |
| 31 | 3.2.1 | Detallar las funciones seleccionadas | 4d | 2017-05-09 | 2017-05-12 | 26 |  |
| 32 | 3.2.2 | Elaborar un diagrama de actividades | 2d | 2017-05-15 | 2017-05-16 | 31 |  |
| 33 | 3.2.3 | Elaborar interfaces visuales tentativas del sistema | 2d | 2017-05-09 | 2017-05-10 | 26 |  |
| 34 | 3.3 | **Definir modelo de datos** | 4d | 2017-05-17 | 2017-05-22 | 30 |  |
| 35 | 3.3.1 | Elaborar el diagrama de transición de estados | 2d | 2017-05-17 | 2017-05-18 | 30 |  |
| 36 | 3.3.2 | Desarrollar interacción entre los datos | 3d | 2017-05-17 | 2017-05-19 | 30 |  |
| 37 | 3.3.3 | Elaborar arquitectura o diseño tecnico del sistema | 4d | 2017-05-17 | 2017-05-22 | 30 |  |
| 38 | 3.4 | **Planificar conjunto de pruebas del sistema** | 15d | 2017-05-23 | 2017-06-13 | 34 |  |
| 39 | 3.4.1 | Definir plan de prueba con los objetivos y caracteristicas del sistema a probar | 3d | 2017-05-23 | 2017-05-26 | 34 |  |
| 40 | 3.4.2 | Planificar pruebas unitarias | 1d | 2017-05-29 | 2017-05-29 | 39 | start no earlier than 2017-05-26 |
| 41 | 3.4.3 | Planificar pruebas de integración de modulos | 1d | 2017-05-29 | 2017-05-29 | 39 |  |
| 42 | 3.4.4 | Planificar pruebas de carga de usuario | 1d | 2017-05-29 | 2017-05-29 | 39 |  |
| 43 | 3.4.5 | **Planificar pruebas de seguridad** | 3d | 2017-05-29 | 2017-05-31 | 39 |  |
| 44 | 3.4.5.1 | Pruebas por niveles de usuarios | 2d | 2017-05-29 | 2017-05-30 | 39 |  |
| 45 | 3.4.5.2 | Pruebas de comprobación de datos filiatorios | 3d | 2017-05-29 | 2017-05-31 | 39 |  |
| 46 | 3.4.6 | Elaborar casos de pruebas y planes de pruebas | 4d | 2017-06-01 | 2017-06-06 | 43 |  |
| 47 | 3.4.7 | Diseñar pruebas y plan para control de calidad | 5d | 2017-06-07 | 2017-06-13 | 46 |  |
| 48 | 4 | Demo de cada sistema para todo el curso | 1d | 2017-09-19 | 2017-09-19 |  |  |
| 49 | 5 | Comienzo de diseño Poster | 1d | 2017-09-26 | 2017-09-26 |  |  |
| 50 | 6 | Demo de cada sistema y poster para exposición | 1d | 2017-10-10 | 2017-10-10 |  |  |

| ID | WBS | Task | Duration | Start | Finish | Predecessors |
| --- | --- | --- | --- | --- | --- | --- |
| 51 | 7 | **Desarrollo e implementación** | 100d | 2017-06-14 | 2017-10-31 | 25, 47 |
| 52 | 7.1 | **Programación y Documentación** | 32d | 2017-06-14 | 2017-07-27 | 38 |
| 53 | 7.1.1 | **Crear ambientes para desarrollo web** | 3d | 2017-06-14 | 2017-06-16 | 38 |
| 54 | 7.1.1.1 | Configurar Apache y Netbeans | 2d | 2017-06-14 | 2017-06-15 | 38 |
| 55 | 7.1.1.2 | Descargar plugin de KumbiaPHP y asociarlo al entorno de desarrollo | 1d | 2017-06-16 | 2017-06-16 | 3, 8, 54 |
| 56 | 7.1.1.3 | Enlazar librerias necesarias para el entorno de desarrollo | 1d | 2017-06-16 | 2017-06-16 | 54 |
| 57 | 7.1.2 | **Crear ambientes para desarrollo mobile** | 5d | 2017-06-19 | 2017-06-23 | 53 |
| 58 | 7.1.2.1 | Crear linea base | 3d | 2017-06-19 | 2017-06-21 | 53 |
| 59 | 7.1.2.2 | Elaborar la arquitectura base | 2d | 2017-06-22 | 2017-06-23 | 58 |
| 60 | 7.1.2.3 | Armar planilla base para creación de pruebas | 2d | 2017-06-19 | 2017-06-20 | 53 |
| 61 | 7.1.3 | **Crear esquema inicial de base de datos** | 9d | 2017-06-26 | 2017-07-06 | 57 |
| 62 | 7.1.3.1 | Esquematizar un modelo de dominio | 2d | 2017-06-26 | 2017-06-27 | 57 |
| 63 | 7.1.3.2 | Establecer configuraciones de esquema | 4d | 2017-06-28 | 2017-07-03 | 62 |
| 64 | 7.1.3.3 | Implementar interfaces para software y postgresql | 3d | 2017-07-04 | 2017-07-06 | 63 |
| 65 | 7.1.4 | **Desarrollo de Modulos** | 15d | 2017-07-07 | 2017-07-27 | 61 |
| 66 | 7.1.4.1 | Seguridad | 7d | 2017-07-07 | 2017-07-17 | 61 |
| 67 | 7.1.4.2 | **Administradción de usuarios** | 6d | 2017-07-07 | 2017-07-14 | 61 |
| 68 | 7.1.4.2.1 | Registro y validación de usuarios | 3d | 2017-07-07 | 2017-07-11 | 61 |
| 69 | 7.1.4.2.2 | Diferenciación por nivel de usuario | 3d | 2017-07-12 | 2017-07-14 | 61, 68 |
| 70 | 7.1.4.3 | Reporte y metricas | 2d | 2017-07-07 | 2017-07-10 | 61 |
| 71 | 7.1.4.4 | Interconexión con base de datos | 2d | 2017-07-07 | 2017-07-10 | 61 |
| 72 | 7.1.4.5 | Solicitud de actas | 4d | 2017-07-17 | 2017-07-20 | 67 |
| 73 | 7.1.4.6 | Seguimiento de solicitudes | 3d | 2017-07-21 | 2017-07-25 | 72 |
| 74 | 7.1.4.7 | Historial de solicitudes por usuario | 3d | 2017-07-21 | 2017-07-25 | 67, 72 |
| 75 | 7.1.4.8 | Búsquedas con filtros | 2d | 2017-07-26 | 2017-07-27 | 73, 74 |
| 76 | 7.1.4.9 | Pago electrónico | 2d | 2017-07-21 | 2017-07-24 | 66, 72 |
| 77 | 7.1.4.10 | Firma digital | 4d | 2017-07-21 | 2017-07-26 | 72 |
| 78 | 7.1.4.11 | Alertas y notificaciones para moviles | 3d | 2017-07-21 | 2017-07-25 | 72 |
| 79 | 7.1.4.12 | Conexión con webservice / api gobierno | 5d | 2017-07-07 | 2017-07-13 | 61 |
| 80 | 7.1.5 | Configuración de servidores y DNS para publicaión del sitio | 3d | 2017-07-07 | 2017-07-11 | 61 |

| ID | WBS | Task | Duration | Start | Finish | Predecessors |
| --- | --- | --- | --- | --- | --- | --- |
| 81 | 7.2 | **Planificación de capacitación** | 6d | 2017-07-28 | 2017-08-04 | 65 |
| 82 | 7.2.1 | Establecer objetivos del plan de capacitación | 2d | 2017-07-28 | 2017-07-31 | 65 |
| 83 | 7.2.2 | Elaborar plan de capacitación | 4d | 2017-08-01 | 2017-08-04 | 82 |
| 84 | 7.3 | **Ejecución, documentación y retroalimentación de pruebas** | 47d | 2017-08-07 | 2017-10-10 | 81 |
| 85 | 7.3.1 | Implementar sistema en el entorno de testing | 4d | 2017-08-07 | 2017-08-10 | 81 |
| 86 | 7.3.2 | **Ejecutar pruebas unitarias sobre los modulos** | 11d | 2017-08-11 | 2017-08-25 | 85 |
| 87 | 7.3.2.1 | Seguridad | 3d | 2017-08-11 | 2017-08-15 | 85 |
| 88 | 7.3.2.2 | **Administración de usuarios** | 2d | 2017-08-16 | 2017-08-17 | 85 |
| 89 | 7.3.2.2.1 | Registro y validación de usuarios | 1d | 2017-08-16 | 2017-08-16 | 87 |
| 90 | 7.3.2.2.2 | Diferenciación por nivel de usuario | 1d | 2017-08-17 | 2017-08-17 | 89 |
| 91 | 7.3.2.3 | Reportes y metricas | 1d | 2017-08-16 | 2017-08-16 | 87 |
| 92 | 7.3.2.4 | Interconexión con base de datos | 1d | 2017-08-17 | 2017-08-17 | 87, 91 |
| 93 | 7.3.2.5 | Solicitud de actas | 3d | 2017-08-18 | 2017-08-22 | 88 |
| 94 | 7.3.2.6 | Seguimiento de solicitudes | 1d | 2017-08-23 | 2017-08-23 | 88, 93 |
| 95 | 7.3.2.7 | Historial de solicitudes por usuarios | 1d | 2017-08-23 | 2017-08-23 | 88, 93 |
| 96 | 7.3.2.8 | Búsquedas con filtros | 1d | 2017-08-18 | 2017-08-18 | 88 |
| 97 | 7.3.2.9 | Pago electrónico | 1d | 2017-08-24 | 2017-08-24 | 93, 94, 95 |
| 98 | 7.3.2.10 | Firma digital | 1d | 2017-08-23 | 2017-08-23 | 93 |
| 99 | 7.3.2.11 | Alertas y notificaciones para moviles | 1d | 2017-08-25 | 2017-08-25 | 93, 97 |
| 100 | 7.3.2.12 | Conexión con webservice/api de gobierno | 1d | 2017-08-23 | 2017-08-23 | 93 |
| 101 | 7.3.3 | **Ejecutar pruebas de integración** | 13d | 2017-08-28 | 2017-09-13 | 86 |
| 102 | 7.3.3.1 | Administración de usuarios, Reportes y metricas, Interconexión con base de datos | 5d | 2017-08-28 | 2017-09-01 | 86 |
| 103 | 7.3.3.2 | Historial de solicitudes por usuario, seguimiento de solicitudes, Solicitud de actas, busqeuda con filtros | 4d | 2017-09-04 | 2017-09-07 | 86, 102 |
| 104 | 7.3.3.3 | Pago electrónico, firma digital, alertas y notificaciones, conexión con webservices/apis de gobierno | 4d | 2017-09-08 | 2017-09-13 | 86, 103 |

| ID | WBS | Task | Duration | Start | Finish | Predecessors |
| --- | --- | --- | --- | --- | --- | --- |
| 105 | 7.3.4 | **Realizar pruebas de seguridad** | 4d | 2017-09-14 | 2017-09-19 | 101 |
| 106 | 7.3.4.1 | Administracion de usuarios, reportes y metricas, interconexión con base de datos | 4d | 2017-09-14 | 2017-09-19 | 101 |
| 107 | 7.3.4.2 | Historial de solicitudes por usuario, seguimiento de solicitudes, Solicitud de actas, busqeuda con filtros | 3d | 2017-09-14 | 2017-09-18 | 101 |
| 108 | 7.3.4.3 | Pago electrónico, firma digital, alertas y notificaciones, conexión con webservices/apis de gobierno | 4d | 2017-09-14 | 2017-09-19 | 101 |
| 109 | 7.3.5 | Realizar pruebas de carga | 3d | 2017-09-20 | 2017-09-22 | 101, 105 |
| 110 | 7.3.6 | Analizar resultados de prueba y crear reportes | 3d | 2017-09-25 | 2017-09-27 | 101, 105, 109 |
| 111 | 7.3.7 | Registrar tareas de mantenimiento en Trello | 3d | 2017-09-28 | 2017-10-02 | 101, 105, 110 |
| 112 | 7.3.8 | Asignar tareas de mantenimiento | 1d | 2017-10-03 | 2017-10-03 | 101, 105, 111 |
| 113 | 7.3.9 | Elaborar documentación de pruebas | 5d | 2017-10-04 | 2017-10-10 | 101, 105, 112 |
| 114 | 7.4 | **Manual de usuario** | 6d | 2017-10-11 | 2017-10-18 |  |
| 115 | 7.4.1 | Elaborar manual de usuario | 6d | 2017-10-11 | 2017-10-18 | 105, 113 |
| 116 | 7.5 | Planficación e implemenación del sistema | 9d | 2017-10-19 | 2017-10-31 | 115 |
| 117 | 8 | Demo de cada sistema y ensayo para exposición | 6d | 2017-11-14 | 2017-11-21 |  |
| 118 | 9 | 11° Exposición anual de sistema | 1d | 2017-11-14 | 2017-11-14 |  |
